| id | projectId | wbsCode | sequence | name | schedulingMode | isSummary | start | finish | durationMinutes | workMinutes | remainingWorkMinutes | percentComplete | constraintType | calendarId | priority | fixedCost | costAccrual | status | isCritical | baselineStart | baselineFinish | baselineDurationMinutes | baselineWorkMinutes | baselineCost | parentId | isMilestone | totalFloatMinutes | freeFloatMinutes | actualStart | actualFinish | actualWorkMinutes |
| --- | --- | --- | --- | --- | --- | --- | --- | --- | --- | --- | --- | --- | --- | --- | --- | --- | --- | --- | --- | --- | --- | --- | --- | --- | --- | --- | --- | --- | --- | --- | --- |
| ws-1 | proj-rag | 1 | 1 | Mobilization | auto | True | 2026-02-02T14:00:00.000Z | 2026-02-26T14:00:00.000Z | 8640 | 960 | 960 | 0 | ASAP | cal-standard | 500 | 0 | prorated | not-started | True | 2026-02-02T14:00:00.000Z | 2026-02-26T14:00:00.000Z | 8640 | 960 | 0 |  |  |  |  |  |  |  |
| ms-1-start | proj-rag | 1.0 | 0 | Mobilization: phase entry | auto |  | 2026-02-02T14:00:00.000Z | 2026-02-02T14:00:00.000Z | 0 | 0 | 0 | 100 | ASAP | cal-standard | 500 | 0 | prorated | complete | True | 2026-02-02T14:00:00.000Z | 2026-02-02T14:00:00.000Z | 0 | 0 | 0 | ws-1 | True | 0 | 0 | 2026-02-02T14:00:00.000Z | 2026-02-02T14:00:00.000Z | 0 |
| task-1-1 | proj-rag | 1.1 | 1 | Draft project charter | auto |  | 2026-02-02T14:00:00.000Z | 2026-02-02T22:00:00.000Z | 480 | 480 | 0 | 100 | ASAP | cal-standard | 500 | 0 | prorated | complete | True | 2026-02-02T14:00:00.000Z | 2026-02-02T22:00:00.000Z | 480 | 480 | 0 | ws-1 |  | 0 | 0 | 2026-02-02T14:00:00.000Z | 2026-02-02T22:00:00.000Z | 480 |
| task-1-2 | proj-rag | 1.2 | 2 | Identify sponsor and steering committee | auto |  | 2026-02-03T14:00:00.000Z | 2026-02-04T18:00:00.000Z | 720 | 720 | 0 | 100 | ASAP | cal-standard | 500 | 0 | prorated | complete | True | 2026-02-03T14:00:00.000Z | 2026-02-04T18:00:00.000Z | 720 | 720 | 0 | ws-1 |  | 0 | 0 | 2026-02-03T14:00:00.000Z | 2026-02-04T18:00:00.000Z | 720 |
| task-1-3 | proj-rag | 1.3 | 3 | Form core delivery team | auto |  | 2026-02-04T18:00:00.000Z | 2026-02-06T18:00:00.000Z | 960 | 960 | 0 | 100 | ASAP | cal-standard | 500 | 0 | prorated | complete | True | 2026-02-04T18:00:00.000Z | 2026-02-06T18:00:00.000Z | 960 | 960 | 0 | ws-1 |  | 0 | 0 | 2026-02-04T18:00:00.000Z | 2026-02-06T18:00:00.000Z | 960 |
| task-1-4 | proj-rag | 1.4 | 4 | Procure cloud environment access | auto |  | 2026-02-06T18:00:00.000Z | 2026-02-09T18:00:00.000Z | 480 | 480 | 0 | 100 | ASAP | cal-standard | 500 | 0 | prorated | complete | True | 2026-02-06T18:00:00.000Z | 2026-02-09T18:00:00.000Z | 480 | 480 | 0 | ws-1 |  | 0 | 0 | 2026-02-06T18:00:00.000Z | 2026-02-09T18:00:00.000Z | 480 |
| task-1-5 | proj-rag | 1.5 | 5 | Set up source control and CI | auto |  | 2026-02-09T18:00:00.000Z | 2026-02-10T22:00:00.000Z | 720 | 720 | 0 | 100 | ASAP | cal-standard | 500 | 0 | prorated | complete | True | 2026-02-09T18:00:00.000Z | 2026-02-10T22:00:00.000Z | 720 | 720 | 0 | ws-1 |  | 0 | 0 | 2026-02-09T18:00:00.000Z | 2026-02-10T22:00:00.000Z | 720 |
| task-1-6 | proj-rag | 1.6 | 6 | Select delivery methodology | auto |  | 2026-02-11T14:00:00.000Z | 2026-02-12T22:00:00.000Z | 960 | 960 | 0 | 100 | ASAP | cal-standard | 500 | 0 | prorated | complete | True | 2026-02-11T14:00:00.000Z | 2026-02-12T22:00:00.000Z | 960 | 960 | 0 | ws-1 |  | 0 | 0 | 2026-02-11T14:00:00.000Z | 2026-02-12T22:00:00.000Z | 960 |
| task-1-7 | proj-rag | 1.7 | 7 | Establish RAID log | auto |  | 2026-02-13T14:00:00.000Z | 2026-02-13T22:00:00.000Z | 480 | 480 | 0 | 100 | ASAP | cal-standard | 500 | 0 | prorated | complete | True | 2026-02-13T14:00:00.000Z | 2026-02-13T22:00:00.000Z | 480 | 480 | 0 | ws-1 |  | 0 | 0 | 2026-02-13T14:00:00.000Z | 2026-02-13T22:00:00.000Z | 480 |
| task-1-8 | proj-rag | 1.8 | 8 | Run kickoff workshop | auto |  | 2026-02-16T14:00:00.000Z | 2026-02-17T18:00:00.000Z | 720 | 720 | 0 | 100 | ASAP | cal-standard | 500 | 0 | prorated | complete | True | 2026-02-16T14:00:00.000Z | 2026-02-17T18:00:00.000Z | 720 | 720 | 0 | ws-1 |  | 0 | 0 | 2026-02-16T14:00:00.000Z | 2026-02-17T18:00:00.000Z | 720 |
| task-1-9 | proj-rag | 1.9 | 9 | Define communication plan | auto |  | 2026-02-17T18:00:00.000Z | 2026-02-19T18:00:00.000Z | 960 | 960 | 0 | 100 | ASAP | cal-standard | 500 | 0 | prorated | complete | True | 2026-02-17T18:00:00.000Z | 2026-02-19T18:00:00.000Z | 960 | 960 | 0 | ws-1 |  | 0 | 0 | 2026-02-17T18:00:00.000Z | 2026-02-19T18:00:00.000Z | 960 |
| task-1-10 | proj-rag | 1.10 | 10 | Draft initial budget | auto |  | 2026-02-19T18:00:00.000Z | 2026-02-20T18:00:00.000Z | 480 | 480 | 0 | 100 | ASAP | cal-standard | 500 | 0 | prorated | complete | True | 2026-02-19T18:00:00.000Z | 2026-02-20T18:00:00.000Z | 480 | 480 | 0 | ws-1 |  | 0 | 0 | 2026-02-19T18:00:00.000Z | 2026-02-20T18:00:00.000Z | 480 |
| task-1-11 | proj-rag | 1.11 | 11 | Set up collaboration tooling | auto |  | 2026-02-20T18:00:00.000Z | 2026-02-23T22:00:00.000Z | 720 | 720 | 0 | 100 | ASAP | cal-standard | 500 | 0 | prorated | complete | True | 2026-02-20T18:00:00.000Z | 2026-02-23T22:00:00.000Z | 720 | 720 | 0 | ws-1 |  | 0 | 0 | 2026-02-20T18:00:00.000Z | 2026-02-23T22:00:00.000Z | 720 |
| task-1-12 | proj-rag | 1.12 | 12 | Onboard core team members | auto |  | 2026-02-24T14:00:00.000Z | 2026-02-25T22:00:00.000Z | 960 | 960 | 0 | 100 | ASAP | cal-standard | 500 | 0 | prorated | complete | True | 2026-02-24T14:00:00.000Z | 2026-02-25T22:00:00.000Z | 960 | 960 | 0 | ws-1 |  | 0 | 0 | 2026-02-24T14:00:00.000Z | 2026-02-25T22:00:00.000Z | 960 |
| ms-1-end | proj-rag | 1.13 | 13 | Mobilization: gate sign-off | auto |  | 2026-02-26T14:00:00.000Z | 2026-02-26T14:00:00.000Z | 0 | 0 | 0 | 100 | ASAP | cal-standard | 500 | 0 | prorated | complete | True | 2026-02-26T14:00:00.000Z | 2026-02-26T14:00:00.000Z | 0 | 0 | 0 | ws-1 | True | 0 | 0 | 2026-02-26T14:00:00.000Z | 2026-02-26T14:00:00.000Z | 0 |
| ws-2 | proj-rag | 2 | 2 | Strategy and Use-Case Qualification | auto | True | 2026-02-26T14:00:00.000Z | 2026-03-24T13:00:00.000Z | 8640 | 960 | 960 | 0 | ASAP | cal-standard | 500 | 0 | prorated | not-started | True | 2026-02-26T14:00:00.000Z | 2026-03-24T13:00:00.000Z | 8640 | 960 | 0 |  |  |  |  |  |  |  |
| ms-2-start | proj-rag | 2.0 | 0 | Strategy and Use-Case Qualification: phase entry | auto |  | 2026-02-26T14:00:00.000Z | 2026-02-26T14:00:00.000Z | 0 | 0 | 0 | 100 | ASAP | cal-standard | 500 | 0 | prorated | complete | True | 2026-02-26T14:00:00.000Z | 2026-02-26T14:00:00.000Z | 0 | 0 | 0 | ws-2 | True | 0 | 0 | 2026-02-26T14:00:00.000Z | 2026-02-26T14:00:00.000Z | 0 |
| task-2-1 | proj-rag | 2.1 | 1 | Document business problem statement | auto |  | 2026-02-26T14:00:00.000Z | 2026-02-26T22:00:00.000Z | 480 | 480 | 0 | 100 | ASAP | cal-standard | 500 | 0 | prorated | complete | True | 2026-02-26T14:00:00.000Z | 2026-02-26T22:00:00.000Z | 480 | 480 | 0 | ws-2 |  | 0 | 0 | 2026-02-26T14:00:00.000Z | 2026-02-26T22:00:00.000Z | 480 |
| task-2-2 | proj-rag | 2.2 | 2 | Conduct stakeholder interviews | auto |  | 2026-02-27T14:00:00.000Z | 2026-03-02T18:00:00.000Z | 720 | 720 | 0 | 100 | ASAP | cal-standard | 500 | 0 | prorated | complete | True | 2026-02-27T14:00:00.000Z | 2026-03-02T18:00:00.000Z | 720 | 720 | 0 | ws-2 |  | 0 | 0 | 2026-02-27T14:00:00.000Z | 2026-03-02T18:00:00.000Z | 720 |
| task-2-3 | proj-rag | 2.3 | 3 | Draft value hypothesis | auto |  | 2026-03-02T18:00:00.000Z | 2026-03-04T18:00:00.000Z | 960 | 960 | 0 | 100 | ASAP | cal-standard | 500 | 0 | prorated | complete | True | 2026-03-02T18:00:00.000Z | 2026-03-04T18:00:00.000Z | 960 | 960 | 0 | ws-2 |  | 0 | 0 | 2026-03-02T18:00:00.000Z | 2026-03-04T18:00:00.000Z | 960 |
| task-2-4 | proj-rag | 2.4 | 4 | Assess AI suitability | auto |  | 2026-03-04T18:00:00.000Z | 2026-03-05T18:00:00.000Z | 480 | 480 | 0 | 100 | ASAP | cal-standard | 500 | 0 | prorated | complete | True | 2026-03-04T18:00:00.000Z | 2026-03-05T18:00:00.000Z | 480 | 480 | 0 | ws-2 |  | 0 | 0 | 2026-03-04T18:00:00.000Z | 2026-03-05T18:00:00.000Z | 480 |
| task-2-5 | proj-rag | 2.5 | 5 | Evaluate build vs buy vs partner | auto |  | 2026-03-05T18:00:00.000Z | 2026-03-06T22:00:00.000Z | 720 | 720 | 0 | 100 | ASAP | cal-standard | 500 | 0 | prorated | complete | True | 2026-03-05T18:00:00.000Z | 2026-03-06T22:00:00.000Z | 720 | 720 | 0 | ws-2 |  | 0 | 0 | 2026-03-05T18:00:00.000Z | 2026-03-06T22:00:00.000Z | 720 |
| task-2-6 | proj-rag | 2.6 | 6 | Conduct feasibility study | auto |  | 2026-03-09T13:00:00.000Z | 2026-03-10T21:00:00.000Z | 960 | 960 | 0 | 100 | ASAP | cal-standard | 500 | 0 | prorated | complete | True | 2026-03-09T13:00:00.000Z | 2026-03-10T21:00:00.000Z | 960 | 960 | 0 | ws-2 |  | 0 | 0 | 2026-03-09T13:00:00.000Z | 2026-03-10T21:00:00.000Z | 960 |
| task-2-7 | proj-rag | 2.7 | 7 | Classify initial risk level | auto |  | 2026-03-11T13:00:00.000Z | 2026-03-11T21:00:00.000Z | 480 | 480 | 0 | 100 | ASAP | cal-standard | 500 | 0 | prorated | complete | True | 2026-03-11T13:00:00.000Z | 2026-03-11T21:00:00.000Z | 480 | 480 | 0 | ws-2 |  | 0 | 0 | 2026-03-11T13:00:00.000Z | 2026-03-11T21:00:00.000Z | 480 |
| task-2-8 | proj-rag | 2.8 | 8 | Define success metrics | auto |  | 2026-03-12T13:00:00.000Z | 2026-03-13T17:00:00.000Z | 720 | 720 | 0 | 100 | ASAP | cal-standard | 500 | 0 | prorated | complete | True | 2026-03-12T13:00:00.000Z | 2026-03-13T17:00:00.000Z | 720 | 720 | 0 | ws-2 |  | 0 | 0 | 2026-03-12T13:00:00.000Z | 2026-03-13T17:00:00.000Z | 720 |
| task-2-9 | proj-rag | 2.9 | 9 | Draft use-case brief | auto |  | 2026-03-13T17:00:00.000Z | 2026-03-17T17:00:00.000Z | 960 | 960 | 0 | 100 | ASAP | cal-standard | 500 | 0 | prorated | complete | True | 2026-03-13T17:00:00.000Z | 2026-03-17T17:00:00.000Z | 960 | 960 | 0 | ws-2 |  | 0 | 0 | 2026-03-13T17:00:00.000Z | 2026-03-17T17:00:00.000Z | 960 |
| task-2-10 | proj-rag | 2.10 | 10 | Review use-case with steering committee | auto |  | 2026-03-17T17:00:00.000Z | 2026-03-18T17:00:00.000Z | 480 | 480 | 0 | 100 | ASAP | cal-standard | 500 | 0 | prorated | complete | True | 2026-03-17T17:00:00.000Z | 2026-03-18T17:00:00.000Z | 480 | 480 | 0 | ws-2 |  | 0 | 0 | 2026-03-17T17:00:00.000Z | 2026-03-18T17:00:00.000Z | 480 |
| task-2-11 | proj-rag | 2.11 | 11 | Approve use-case charter | auto |  | 2026-03-18T17:00:00.000Z | 2026-03-19T21:00:00.000Z | 720 | 720 | 0 | 100 | ASAP | cal-standard | 500 | 0 | prorated | complete | True | 2026-03-18T17:00:00.000Z | 2026-03-19T21:00:00.000Z | 720 | 720 | 0 | ws-2 |  | 0 | 0 | 2026-03-18T17:00:00.000Z | 2026-03-19T21:00:00.000Z | 720 |
| task-2-12 | proj-rag | 2.12 | 12 | Publish use-case qualification summary | auto |  | 2026-03-20T13:00:00.000Z | 2026-03-23T21:00:00.000Z | 960 | 960 | 0 | 100 | ASAP | cal-standard | 500 | 0 | prorated | complete | True | 2026-03-20T13:00:00.000Z | 2026-03-23T21:00:00.000Z | 960 | 960 | 0 | ws-2 |  | 0 | 0 | 2026-03-20T13:00:00.000Z | 2026-03-23T21:00:00.000Z | 960 |
| ms-2-end | proj-rag | 2.13 | 13 | Strategy and Use-Case Qualification: gate sign-off | auto |  | 2026-03-24T13:00:00.000Z | 2026-03-24T13:00:00.000Z | 0 | 0 | 0 | 100 | ASAP | cal-standard | 500 | 0 | prorated | complete | True | 2026-03-24T13:00:00.000Z | 2026-03-24T13:00:00.000Z | 0 | 0 | 0 | ws-2 | True | 0 | 0 | 2026-03-24T13:00:00.000Z | 2026-03-24T13:00:00.000Z | 0 |
| ws-3 | proj-rag | 3 | 3 | Product Discovery | auto | True | 2026-03-24T13:00:00.000Z | 2026-04-17T13:00:00.000Z | 8640 | 960 | 960 | 0 | ASAP | cal-standard | 500 | 0 | prorated | not-started | True | 2026-03-24T13:00:00.000Z | 2026-04-17T13:00:00.000Z | 8640 | 960 | 0 |  |  |  |  |  |  |  |
| ms-3-start | proj-rag | 3.0 | 0 | Product Discovery: phase entry | auto |  | 2026-03-24T13:00:00.000Z | 2026-03-24T13:00:00.000Z | 0 | 0 | 0 | 100 | ASAP | cal-standard | 500 | 0 | prorated | complete | True | 2026-03-24T13:00:00.000Z | 2026-03-24T13:00:00.000Z | 0 | 0 | 0 | ws-3 | True | 0 | 0 | 2026-03-24T13:00:00.000Z | 2026-03-24T13:00:00.000Z | 0 |
| task-3-1 | proj-rag | 3.1 | 1 | Recruit user research participants | auto |  | 2026-03-24T13:00:00.000Z | 2026-03-24T21:00:00.000Z | 480 | 480 | 0 | 100 | ASAP | cal-standard | 500 | 0 | prorated | complete | True | 2026-03-24T13:00:00.000Z | 2026-03-24T21:00:00.000Z | 480 | 480 | 0 | ws-3 |  | 0 | 0 | 2026-03-24T13:00:00.000Z | 2026-03-24T21:00:00.000Z | 480 |
| task-3-2 | proj-rag | 3.2 | 2 | Conduct persona interviews | auto |  | 2026-03-25T13:00:00.000Z | 2026-03-26T17:00:00.000Z | 720 | 720 | 0 | 100 | ASAP | cal-standard | 500 | 0 | prorated | complete | True | 2026-03-25T13:00:00.000Z | 2026-03-26T17:00:00.000Z | 720 | 720 | 0 | ws-3 |  | 0 | 0 | 2026-03-25T13:00:00.000Z | 2026-03-26T17:00:00.000Z | 720 |
| task-3-3 | proj-rag | 3.3 | 3 | Synthesize personas | auto |  | 2026-03-26T17:00:00.000Z | 2026-03-30T17:00:00.000Z | 960 | 960 | 0 | 100 | ASAP | cal-standard | 500 | 0 | prorated | complete | True | 2026-03-26T17:00:00.000Z | 2026-03-30T17:00:00.000Z | 960 | 960 | 0 | ws-3 |  | 0 | 0 | 2026-03-26T17:00:00.000Z | 2026-03-30T17:00:00.000Z | 960 |
| task-3-4 | proj-rag | 3.4 | 4 | Map jobs-to-be-done | auto |  | 2026-03-30T17:00:00.000Z | 2026-03-31T17:00:00.000Z | 480 | 480 | 0 | 100 | ASAP | cal-standard | 500 | 0 | prorated | complete | True | 2026-03-30T17:00:00.000Z | 2026-03-31T17:00:00.000Z | 480 | 480 | 0 | ws-3 |  | 0 | 0 | 2026-03-30T17:00:00.000Z | 2026-03-31T17:00:00.000Z | 480 |
| task-3-5 | proj-rag | 3.5 | 5 | Draft user journey map | auto |  | 2026-03-31T17:00:00.000Z | 2026-04-01T21:00:00.000Z | 720 | 720 | 0 | 100 | ASAP | cal-standard | 500 | 0 | prorated | complete | True | 2026-03-31T17:00:00.000Z | 2026-04-01T21:00:00.000Z | 720 | 720 | 0 | ws-3 |  | 0 | 0 | 2026-03-31T17:00:00.000Z | 2026-04-01T21:00:00.000Z | 720 |
| task-3-6 | proj-rag | 3.6 | 6 | Identify opportunity backlog | auto |  | 2026-04-02T13:00:00.000Z | 2026-04-03T21:00:00.000Z | 960 | 960 | 0 | 100 | ASAP | cal-standard | 500 | 0 | prorated | complete | True | 2026-04-02T13:00:00.000Z | 2026-04-03T21:00:00.000Z | 960 | 960 | 0 | ws-3 |  | 0 | 0 | 2026-04-02T13:00:00.000Z | 2026-04-03T21:00:00.000Z | 960 |
| task-3-7 | proj-rag | 3.7 | 7 | Build low-fidelity prototype | auto |  | 2026-04-06T13:00:00.000Z | 2026-04-06T21:00:00.000Z | 480 | 480 | 0 | 100 | ASAP | cal-standard | 500 | 0 | prorated | complete | True | 2026-04-06T13:00:00.000Z | 2026-04-06T21:00:00.000Z | 480 | 480 | 0 | ws-3 |  | 0 | 0 | 2026-04-06T13:00:00.000Z | 2026-04-06T21:00:00.000Z | 480 |
| task-3-8 | proj-rag | 3.8 | 8 | Run desirability testing | auto |  | 2026-04-07T13:00:00.000Z | 2026-04-08T17:00:00.000Z | 720 | 720 | 0 | 100 | ASAP | cal-standard | 500 | 0 | prorated | complete | True | 2026-04-07T13:00:00.000Z | 2026-04-08T17:00:00.000Z | 720 | 720 | 0 | ws-3 |  | 0 | 0 | 2026-04-07T13:00:00.000Z | 2026-04-08T17:00:00.000Z | 720 |
| task-3-9 | proj-rag | 3.9 | 9 | Draft outcome roadmap | auto |  | 2026-04-08T17:00:00.000Z | 2026-04-10T17:00:00.000Z | 960 | 960 | 0 | 100 | ASAP | cal-standard | 500 | 0 | prorated | complete | True | 2026-04-08T17:00:00.000Z | 2026-04-10T17:00:00.000Z | 960 | 960 | 0 | ws-3 |  | 0 | 0 | 2026-04-08T17:00:00.000Z | 2026-04-10T17:00:00.000Z | 960 |
| task-3-10 | proj-rag | 3.10 | 10 | Define MVP scope | auto |  | 2026-04-10T17:00:00.000Z | 2026-04-13T17:00:00.000Z | 480 | 480 | 0 | 100 | ASAP | cal-standard | 500 | 0 | prorated | complete | True | 2026-04-10T17:00:00.000Z | 2026-04-13T17:00:00.000Z | 480 | 480 | 0 | ws-3 |  | 0 | 0 | 2026-04-10T17:00:00.000Z | 2026-04-13T17:00:00.000Z | 480 |
| task-3-11 | proj-rag | 3.11 | 11 | Review MVP scope with stakeholders | auto |  | 2026-04-13T17:00:00.000Z | 2026-04-14T21:00:00.000Z | 720 | 720 | 0 | 100 | ASAP | cal-standard | 500 | 0 | prorated | complete | True | 2026-04-13T17:00:00.000Z | 2026-04-14T21:00:00.000Z | 720 | 720 | 0 | ws-3 |  | 0 | 0 | 2026-04-13T17:00:00.000Z | 2026-04-14T21:00:00.000Z | 720 |
| task-3-12 | proj-rag | 3.12 | 12 | Finalize product backlog for MVP | auto |  | 2026-04-15T13:00:00.000Z | 2026-04-16T21:00:00.000Z | 960 | 960 | 0 | 100 | ASAP | cal-standard | 500 | 0 | prorated | complete | True | 2026-04-15T13:00:00.000Z | 2026-04-16T21:00:00.000Z | 960 | 960 | 0 | ws-3 |  | 0 | 0 | 2026-04-15T13:00:00.000Z | 2026-04-16T21:00:00.000Z | 960 |
| ms-3-end | proj-rag | 3.13 | 13 | Product Discovery: gate sign-off | auto |  | 2026-04-17T13:00:00.000Z | 2026-04-17T13:00:00.000Z | 0 | 0 | 0 | 100 | ASAP | cal-standard | 500 | 0 | prorated | complete | True | 2026-04-17T13:00:00.000Z | 2026-04-17T13:00:00.000Z | 0 | 0 | 0 | ws-3 | True | 0 | 0 | 2026-04-17T13:00:00.000Z | 2026-04-17T13:00:00.000Z | 0 |
| ws-4 | proj-rag | 4 | 4 | Data and Knowledge Readiness | auto | True | 2026-04-17T13:00:00.000Z | 2026-05-13T13:00:00.000Z | 8640 | 960 | 960 | 0 | ASAP | cal-standard | 500 | 0 | prorated | not-started | True | 2026-04-17T13:00:00.000Z | 2026-05-13T13:00:00.000Z | 8640 | 960 | 0 |  |  |  |  |  |  |  |
| ms-4-start | proj-rag | 4.0 | 0 | Data and Knowledge Readiness: phase entry | auto |  | 2026-04-17T13:00:00.000Z | 2026-04-17T13:00:00.000Z | 0 | 0 | 0 | 100 | ASAP | cal-standard | 500 | 0 | prorated | complete | True | 2026-04-17T13:00:00.000Z | 2026-04-17T13:00:00.000Z | 0 | 0 | 0 | ws-4 | True | 0 | 0 | 2026-04-17T13:00:00.000Z | 2026-04-17T13:00:00.000Z | 0 |
| task-4-1 | proj-rag | 4.1 | 1 | Inventory candidate data sources | auto |  | 2026-04-17T13:00:00.000Z | 2026-04-17T21:00:00.000Z | 480 | 480 | 0 | 100 | ASAP | cal-standard | 500 | 0 | prorated | complete | True | 2026-04-17T13:00:00.000Z | 2026-04-17T21:00:00.000Z | 480 | 480 | 0 | ws-4 |  | 0 | 0 | 2026-04-17T13:00:00.000Z | 2026-04-17T21:00:00.000Z | 480 |
| task-4-2 | proj-rag | 4.2 | 2 | Confirm data ownership | auto |  | 2026-04-20T13:00:00.000Z | 2026-04-21T17:00:00.000Z | 720 | 720 | 0 | 100 | ASAP | cal-standard | 500 | 0 | prorated | complete | True | 2026-04-20T13:00:00.000Z | 2026-04-21T17:00:00.000Z | 720 | 720 | 0 | ws-4 |  | 0 | 0 | 2026-04-20T13:00:00.000Z | 2026-04-21T17:00:00.000Z | 720 |
| task-4-3 | proj-rag | 4.3 | 3 | Assess data access and consent | auto |  | 2026-04-21T17:00:00.000Z | 2026-04-23T17:00:00.000Z | 960 | 960 | 0 | 100 | ASAP | cal-standard | 500 | 0 | prorated | complete | True | 2026-04-21T17:00:00.000Z | 2026-04-23T17:00:00.000Z | 960 | 960 | 0 | ws-4 |  | 0 | 0 | 2026-04-21T17:00:00.000Z | 2026-04-23T17:00:00.000Z | 960 |
| task-4-4 | proj-rag | 4.4 | 4 | Profile source data quality | auto |  | 2026-04-23T17:00:00.000Z | 2026-04-24T17:00:00.000Z | 480 | 480 | 0 | 100 | ASAP | cal-standard | 500 | 0 | prorated | complete | True | 2026-04-23T17:00:00.000Z | 2026-04-24T17:00:00.000Z | 480 | 480 | 0 | ws-4 |  | 0 | 0 | 2026-04-23T17:00:00.000Z | 2026-04-24T17:00:00.000Z | 480 |
| task-4-5 | proj-rag | 4.5 | 5 | Classify data sensitivity | auto |  | 2026-04-24T17:00:00.000Z | 2026-04-27T21:00:00.000Z | 720 | 720 | 0 | 100 | ASAP | cal-standard | 500 | 0 | prorated | complete | True | 2026-04-24T17:00:00.000Z | 2026-04-27T21:00:00.000Z | 720 | 720 | 0 | ws-4 |  | 0 | 0 | 2026-04-24T17:00:00.000Z | 2026-04-27T21:00:00.000Z | 720 |
| task-4-6 | proj-rag | 4.6 | 6 | Document data lineage | auto |  | 2026-04-28T13:00:00.000Z | 2026-04-29T21:00:00.000Z | 960 | 960 | 0 | 100 | ASAP | cal-standard | 500 | 0 | prorated | complete | True | 2026-04-28T13:00:00.000Z | 2026-04-29T21:00:00.000Z | 960 | 960 | 0 | ws-4 |  | 0 | 0 | 2026-04-28T13:00:00.000Z | 2026-04-29T21:00:00.000Z | 960 |
| task-4-7 | proj-rag | 4.7 | 7 | Design semantic model | auto |  | 2026-04-30T13:00:00.000Z | 2026-04-30T21:00:00.000Z | 480 | 480 | 0 | 100 | ASAP | cal-standard | 500 | 0 | prorated | complete | True | 2026-04-30T13:00:00.000Z | 2026-04-30T21:00:00.000Z | 480 | 480 | 0 | ws-4 |  | 0 | 0 | 2026-04-30T13:00:00.000Z | 2026-04-30T21:00:00.000Z | 480 |
| task-4-8 | proj-rag | 4.8 | 8 | Design retrieval chunking strategy | auto |  | 2026-05-01T13:00:00.000Z | 2026-05-04T17:00:00.000Z | 720 | 720 | 0 | 100 | ASAP | cal-standard | 500 | 0 | prorated | complete | True | 2026-05-01T13:00:00.000Z | 2026-05-04T17:00:00.000Z | 720 | 720 | 0 | ws-4 |  | 0 | 0 | 2026-05-01T13:00:00.000Z | 2026-05-04T17:00:00.000Z | 720 |
| task-4-9 | proj-rag | 4.9 | 9 | Build synthetic data plan | auto |  | 2026-05-04T17:00:00.000Z | 2026-05-06T17:00:00.000Z | 960 | 960 | 0 | 100 | ASAP | cal-standard | 500 | 0 | prorated | complete | True | 2026-05-04T17:00:00.000Z | 2026-05-06T17:00:00.000Z | 960 | 960 | 0 | ws-4 |  | 0 | 0 | 2026-05-04T17:00:00.000Z | 2026-05-06T17:00:00.000Z | 960 |
| task-4-10 | proj-rag | 4.10 | 10 | Run data quality gate review | auto |  | 2026-05-06T17:00:00.000Z | 2026-05-07T17:00:00.000Z | 480 | 480 | 0 | 100 | ASAP | cal-standard | 500 | 0 | prorated | complete | True | 2026-05-06T17:00:00.000Z | 2026-05-07T17:00:00.000Z | 480 | 480 | 0 | ws-4 |  | 0 | 0 | 2026-05-06T17:00:00.000Z | 2026-05-07T17:00:00.000Z | 480 |
| task-4-11 | proj-rag | 4.11 | 11 | Remediate data quality issues | auto |  | 2026-05-07T17:00:00.000Z | 2026-05-08T21:00:00.000Z | 720 | 720 | 0 | 100 | ASAP | cal-standard | 500 | 0 | prorated | complete | True | 2026-05-07T17:00:00.000Z | 2026-05-08T21:00:00.000Z | 720 | 720 | 0 | ws-4 |  | 0 | 0 | 2026-05-07T17:00:00.000Z | 2026-05-08T21:00:00.000Z | 720 |
| task-4-12 | proj-rag | 4.12 | 12 | Sign off data readiness gate | auto |  | 2026-05-11T13:00:00.000Z | 2026-05-12T21:00:00.000Z | 960 | 960 | 0 | 100 | ASAP | cal-standard | 500 | 0 | prorated | complete | True | 2026-05-11T13:00:00.000Z | 2026-05-12T21:00:00.000Z | 960 | 960 | 0 | ws-4 |  | 0 | 0 | 2026-05-11T13:00:00.000Z | 2026-05-12T21:00:00.000Z | 960 |
| ms-4-end | proj-rag | 4.13 | 13 | Data and Knowledge Readiness: gate sign-off | auto |  | 2026-05-13T13:00:00.000Z | 2026-05-13T13:00:00.000Z | 0 | 0 | 0 | 100 | ASAP | cal-standard | 500 | 0 | prorated | complete | True | 2026-05-13T13:00:00.000Z | 2026-05-13T13:00:00.000Z | 0 | 0 | 0 | ws-4 | True | 0 | 0 | 2026-05-13T13:00:00.000Z | 2026-05-13T13:00:00.000Z | 0 |
| ws-5 | proj-rag | 5 | 5 | Architecture, Security and Governance | auto | True | 2026-05-13T13:00:00.000Z | 2026-06-17T13:00:00.000Z | 11520 | 960 | 960 | 0 | ASAP | cal-standard | 500 | 0 | prorated | not-started | True | 2026-05-13T13:00:00.000Z | 2026-06-17T13:00:00.000Z | 11520 | 960 | 0 |  |  |  |  |  |  |  |
| ms-5-start | proj-rag | 5.0 | 0 | Architecture, Security and Governance: phase entry | auto |  | 2026-05-13T13:00:00.000Z | 2026-05-13T13:00:00.000Z | 0 | 0 | 0 | 100 | ASAP | cal-standard | 500 | 0 | prorated | complete | True | 2026-05-13T13:00:00.000Z | 2026-05-13T13:00:00.000Z | 0 | 0 | 0 | ws-5 | True | 0 | 0 | 2026-05-13T13:00:00.000Z | 2026-05-13T13:00:00.000Z | 0 |
| task-5-1 | proj-rag | 5.1 | 1 | Draft solution architecture | auto |  | 2026-05-13T13:00:00.000Z | 2026-05-13T21:00:00.000Z | 480 | 480 | 0 | 100 | ASAP | cal-standard | 500 | 0 | prorated | complete | True | 2026-05-13T13:00:00.000Z | 2026-05-13T21:00:00.000Z | 480 | 480 | 0 | ws-5 |  | 0 | 0 | 2026-05-13T13:00:00.000Z | 2026-05-13T21:00:00.000Z | 480 |
| task-5-2 | proj-rag | 5.2 | 2 | Conduct threat modeling workshop | auto |  | 2026-05-14T13:00:00.000Z | 2026-05-15T17:00:00.000Z | 720 | 720 | 0 | 100 | ASAP | cal-standard | 500 | 0 | prorated | complete | True | 2026-05-14T13:00:00.000Z | 2026-05-15T17:00:00.000Z | 720 | 720 | 0 | ws-5 |  | 0 | 0 | 2026-05-14T13:00:00.000Z | 2026-05-15T17:00:00.000Z | 720 |
| task-5-3 | proj-rag | 5.3 | 3 | Complete privacy impact assessment | auto |  | 2026-05-15T17:00:00.000Z | 2026-05-19T17:00:00.000Z | 960 | 960 | 0 | 100 | ASAP | cal-standard | 500 | 0 | prorated | complete | True | 2026-05-15T17:00:00.000Z | 2026-05-19T17:00:00.000Z | 960 | 960 | 0 | ws-5 |  | 0 | 0 | 2026-05-15T17:00:00.000Z | 2026-05-19T17:00:00.000Z | 960 |
| task-5-4 | proj-rag | 5.4 | 4 | Complete responsible-AI assessment | auto |  | 2026-05-19T17:00:00.000Z | 2026-05-20T17:00:00.000Z | 480 | 480 | 0 | 100 | ASAP | cal-standard | 500 | 0 | prorated | complete | True | 2026-05-19T17:00:00.000Z | 2026-05-20T17:00:00.000Z | 480 | 480 | 0 | ws-5 |  | 0 | 0 | 2026-05-19T17:00:00.000Z | 2026-05-20T17:00:00.000Z | 480 |
| task-5-5 | proj-rag | 5.5 | 5 | Complete model risk assessment | auto |  | 2026-05-20T17:00:00.000Z | 2026-05-21T21:00:00.000Z | 720 | 720 | 0 | 100 | ASAP | cal-standard | 500 | 0 | prorated | complete | True | 2026-05-20T17:00:00.000Z | 2026-05-21T21:00:00.000Z | 720 | 720 | 0 | ws-5 |  | 0 | 0 | 2026-05-20T17:00:00.000Z | 2026-05-21T21:00:00.000Z | 720 |
| task-5-6 | proj-rag | 5.6 | 6 | Design identity and authorization model | auto |  | 2026-05-22T13:00:00.000Z | 2026-05-26T21:00:00.000Z | 960 | 960 | 0 | 100 | ASAP | cal-standard | 500 | 0 | prorated | complete | True | 2026-05-22T13:00:00.000Z | 2026-05-26T21:00:00.000Z | 960 | 960 | 0 | ws-5 |  | 0 | 0 | 2026-05-22T13:00:00.000Z | 2026-05-26T21:00:00.000Z | 960 |
| task-5-7 | proj-rag | 5.7 | 7 | Design data protection controls | auto |  | 2026-05-27T13:00:00.000Z | 2026-05-27T21:00:00.000Z | 480 | 480 | 0 | 100 | ASAP | cal-standard | 500 | 0 | prorated | complete | True | 2026-05-27T13:00:00.000Z | 2026-05-27T21:00:00.000Z | 480 | 480 | 0 | ws-5 |  | 0 | 0 | 2026-05-27T13:00:00.000Z | 2026-05-27T21:00:00.000Z | 480 |
| task-5-8 | proj-rag | 5.8 | 8 | Conduct third-party vendor review | auto |  | 2026-05-28T13:00:00.000Z | 2026-05-29T17:00:00.000Z | 720 | 720 | 0 | 100 | ASAP | cal-standard | 500 | 0 | prorated | complete | True | 2026-05-28T13:00:00.000Z | 2026-05-29T17:00:00.000Z | 720 | 720 | 0 | ws-5 |  | 0 | 0 | 2026-05-28T13:00:00.000Z | 2026-05-29T17:00:00.000Z | 720 |

| id | projectId | wbsCode | sequence | name | schedulingMode | isSummary | start | finish | durationMinutes | workMinutes | remainingWorkMinutes | percentComplete | constraintType | calendarId | priority | fixedCost | costAccrual | status | isCritical | baselineStart | baselineFinish | baselineDurationMinutes | baselineWorkMinutes | baselineCost | parentId | isMilestone | totalFloatMinutes | freeFloatMinutes | actualStart | actualFinish | actualWorkMinutes | tags |
| --- | --- | --- | --- | --- | --- | --- | --- | --- | --- | --- | --- | --- | --- | --- | --- | --- | --- | --- | --- | --- | --- | --- | --- | --- | --- | --- | --- | --- | --- | --- | --- | --- |
| task-5-9 | proj-rag | 5.9 | 9 | Draft architecture decision records | auto |  | 2026-05-29T17:00:00.000Z | 2026-06-02T17:00:00.000Z | 960 | 960 | 0 | 100 | ASAP | cal-standard | 500 | 0 | prorated | complete | True | 2026-05-29T17:00:00.000Z | 2026-06-02T17:00:00.000Z | 960 | 960 | 0 | ws-5 |  | 0 | 0 | 2026-05-29T17:00:00.000Z | 2026-06-02T17:00:00.000Z | 960 |  |
| task-5-10 | proj-rag | 5.10 | 10 | Review architecture with security board | auto |  | 2026-06-02T17:00:00.000Z | 2026-06-03T17:00:00.000Z | 480 | 480 | 0 | 100 | ASAP | cal-standard | 500 | 0 | prorated | complete | True | 2026-06-02T17:00:00.000Z | 2026-06-03T17:00:00.000Z | 480 | 480 | 0 | ws-5 |  | 0 | 0 | 2026-06-02T17:00:00.000Z | 2026-06-03T17:00:00.000Z | 480 |  |
| task-5-11 | proj-rag | 5.11 | 11 | Remediate architecture findings | auto |  | 2026-06-11T17:00:00.000Z | 2026-06-12T21:00:00.000Z | 720 | 720 | 0 | 100 | ASAP | cal-standard | 500 | 0 | prorated | complete | True | 2026-06-11T17:00:00.000Z | 2026-06-12T21:00:00.000Z | 720 | 720 | 0 | ws-5 |  | 0 | 0 | 2026-06-11T17:00:00.000Z | 2026-06-12T21:00:00.000Z | 720 |  |
| task-5-12 | proj-rag | 5.12 | 12 | Sign off architecture and governance gate | auto |  | 2026-06-15T13:00:00.000Z | 2026-06-16T21:00:00.000Z | 960 | 960 | 0 | 100 | ASAP | cal-standard | 500 | 0 | prorated | complete | True | 2026-06-15T13:00:00.000Z | 2026-06-16T21:00:00.000Z | 960 | 960 | 0 | ws-5 |  | 0 | 0 | 2026-06-15T13:00:00.000Z | 2026-06-16T21:00:00.000Z | 960 |  |
| ms-5-end | proj-rag | 5.13 | 13 | Architecture, Security and Governance: gate sign-off | auto |  | 2026-06-17T13:00:00.000Z | 2026-06-17T13:00:00.000Z | 0 | 0 | 0 | 100 | ASAP | cal-standard | 500 | 0 | prorated | complete | True | 2026-06-17T13:00:00.000Z | 2026-06-17T13:00:00.000Z | 0 | 0 | 0 | ws-5 | True | 0 | 0 | 2026-06-17T13:00:00.000Z | 2026-06-17T13:00:00.000Z | 0 |  |
| ws-6 | proj-rag | 6 | 6 | Model and AI Engineering | auto | True | 2026-06-17T13:00:00.000Z | 2026-07-14T13:00:00.000Z | 8640 | 960 | 960 | 0 | ASAP | cal-standard | 500 | 0 | prorated | not-started | True | 2026-06-17T13:00:00.000Z | 2026-07-14T13:00:00.000Z | 8640 | 960 | 0 |  |  |  |  |  |  |  |  |
| ms-6-start | proj-rag | 6.0 | 0 | Model and AI Engineering: phase entry | auto |  | 2026-06-17T13:00:00.000Z | 2026-06-17T13:00:00.000Z | 0 | 0 | 0 | 100 | ASAP | cal-standard | 500 | 0 | prorated | complete | True | 2026-06-17T13:00:00.000Z | 2026-06-17T13:00:00.000Z | 0 | 0 | 0 | ws-6 | True | 0 | 0 | 2026-06-17T13:00:00.000Z | 2026-06-17T13:00:00.000Z | 0 |  |
| task-6-1 | proj-rag | 6.1 | 1 | Establish baseline retrieval pipeline | auto |  | 2026-06-17T13:00:00.000Z | 2026-06-17T21:00:00.000Z | 480 | 480 | 0 | 100 | ASAP | cal-standard | 500 | 0 | prorated | complete | True | 2026-06-17T13:00:00.000Z | 2026-06-17T21:00:00.000Z | 480 | 480 | 0 | ws-6 |  | 0 | 0 | 2026-06-17T13:00:00.000Z | 2026-06-17T21:00:00.000Z | 480 |  |
| task-6-2 | proj-rag | 6.2 | 2 | Evaluate candidate embedding models | auto |  | 2026-06-18T13:00:00.000Z | 2026-06-19T17:00:00.000Z | 720 | 720 | 0 | 100 | ASAP | cal-standard | 500 | 0 | prorated | complete | True | 2026-06-18T13:00:00.000Z | 2026-06-19T17:00:00.000Z | 720 | 720 | 0 | ws-6 |  | 0 | 0 | 2026-06-18T13:00:00.000Z | 2026-06-19T17:00:00.000Z | 720 |  |
| task-6-3 | proj-rag | 6.3 | 3 | Select model provider | auto |  | 2026-06-19T17:00:00.000Z | 2026-06-23T17:00:00.000Z | 960 | 960 | 0 | 100 | ASAP | cal-standard | 500 | 0 | prorated | complete | True | 2026-06-19T17:00:00.000Z | 2026-06-23T17:00:00.000Z | 960 | 960 | 0 | ws-6 |  | 0 | 0 | 2026-06-19T17:00:00.000Z | 2026-06-23T17:00:00.000Z | 960 |  |
| task-6-4 | proj-rag | 6.4 | 4 | Design prompt templates | auto |  | 2026-06-23T17:00:00.000Z | 2026-06-24T17:00:00.000Z | 480 | 480 | 0 | 100 | ASAP | cal-standard | 500 | 0 | prorated | complete | True | 2026-06-23T17:00:00.000Z | 2026-06-24T17:00:00.000Z | 480 | 480 | 0 | ws-6 |  | 0 | 0 | 2026-06-23T17:00:00.000Z | 2026-06-24T17:00:00.000Z | 480 |  |
| task-6-5 | proj-rag | 6.5 | 5 | Implement RAG retrieval service | auto |  | 2026-06-24T17:00:00.000Z | 2026-06-25T21:00:00.000Z | 720 | 720 | 0 | 100 | ASAP | cal-standard | 500 | 0 | prorated | complete | True | 2026-06-24T17:00:00.000Z | 2026-06-25T21:00:00.000Z | 720 | 720 | 0 | ws-6 |  | 0 | 0 | 2026-06-24T17:00:00.000Z | 2026-06-25T21:00:00.000Z | 720 |  |
| task-6-6 | proj-rag | 6.6 | 6 | Implement agent tool integrations | auto |  | 2026-06-26T13:00:00.000Z | 2026-06-29T21:00:00.000Z | 960 | 960 | 0 | 100 | ASAP | cal-standard | 500 | 0 | prorated | complete | True | 2026-06-26T13:00:00.000Z | 2026-06-29T21:00:00.000Z | 960 | 960 | 0 | ws-6 |  | 0 | 0 | 2026-06-26T13:00:00.000Z | 2026-06-29T21:00:00.000Z | 960 |  |
| task-6-7 | proj-rag | 6.7 | 7 | Design safety guardrails | auto |  | 2026-06-30T13:00:00.000Z | 2026-06-30T21:00:00.000Z | 480 | 480 | 0 | 100 | ASAP | cal-standard | 500 | 0 | prorated | complete | True | 2026-06-30T13:00:00.000Z | 2026-06-30T21:00:00.000Z | 480 | 480 | 0 | ws-6 |  | 0 | 0 | 2026-06-30T13:00:00.000Z | 2026-06-30T21:00:00.000Z | 480 |  |
| task-6-8 | proj-rag | 6.8 | 8 | Implement human review workflow | auto |  | 2026-07-01T13:00:00.000Z | 2026-07-02T17:00:00.000Z | 720 | 720 | 0 | 100 | ASAP | cal-standard | 500 | 0 | prorated | complete | True | 2026-07-01T13:00:00.000Z | 2026-07-02T17:00:00.000Z | 720 | 720 | 0 | ws-6 |  | 0 | 0 | 2026-07-01T13:00:00.000Z | 2026-07-02T17:00:00.000Z | 720 |  |
| task-6-9 | proj-rag | 6.9 | 9 | Optimize token usage and latency | auto |  | 2026-07-02T17:00:00.000Z | 2026-07-07T17:00:00.000Z | 960 | 960 | 0 | 100 | ASAP | cal-standard | 500 | 0 | prorated | complete | True | 2026-07-02T17:00:00.000Z | 2026-07-07T17:00:00.000Z | 960 | 960 | 0 | ws-6 |  | 0 | 0 | 2026-07-02T17:00:00.000Z | 2026-07-07T17:00:00.000Z | 960 |  |
| task-6-10 | proj-rag | 6.10 | 10 | Set up experiment tracking | auto |  | 2026-07-07T17:00:00.000Z | 2026-07-08T17:00:00.000Z | 480 | 480 | 0 | 100 | ASAP | cal-standard | 500 | 0 | prorated | complete | True | 2026-07-07T17:00:00.000Z | 2026-07-08T17:00:00.000Z | 480 | 480 | 0 | ws-6 |  | 0 | 0 | 2026-07-07T17:00:00.000Z | 2026-07-08T17:00:00.000Z | 480 |  |
| task-6-11 | proj-rag | 6.11 | 11 | Tune retrieval relevance | auto |  | 2026-07-08T17:00:00.000Z | 2026-07-09T21:00:00.000Z | 720 | 720 | 0 | 100 | ASAP | cal-standard | 500 | 0 | prorated | complete | True | 2026-07-08T17:00:00.000Z | 2026-07-09T21:00:00.000Z | 720 | 720 | 0 | ws-6 |  | 0 | 0 | 2026-07-08T17:00:00.000Z | 2026-07-09T21:00:00.000Z | 720 |  |
| task-6-12 | proj-rag | 6.12 | 12 | Freeze model and prompt versions for evaluation | auto |  | 2026-07-10T13:00:00.000Z | 2026-07-13T21:00:00.000Z | 960 | 960 | 0 | 100 | ASAP | cal-standard | 500 | 0 | prorated | complete | True | 2026-07-10T13:00:00.000Z | 2026-07-13T21:00:00.000Z | 960 | 960 | 0 | ws-6 |  | 0 | 0 | 2026-07-10T13:00:00.000Z | 2026-07-13T21:00:00.000Z | 960 |  |
| ms-6-end | proj-rag | 6.13 | 13 | Model and AI Engineering: gate sign-off | auto |  | 2026-07-14T13:00:00.000Z | 2026-07-14T13:00:00.000Z | 0 | 0 | 0 | 100 | ASAP | cal-standard | 500 | 0 | prorated | complete | True | 2026-07-14T13:00:00.000Z | 2026-07-14T13:00:00.000Z | 0 | 0 | 0 | ws-6 | True | 0 | 0 | 2026-07-14T13:00:00.000Z | 2026-07-14T13:00:00.000Z | 0 |  |
| ws-7 | proj-rag | 7 | 7 | Application and Integration Engineering | auto | True | 2026-07-14T13:00:00.000Z | 2026-08-07T17:00:00.000Z | 8880 | 960 | 960 | 0 | ASAP | cal-standard | 500 | 0 | prorated | not-started | True | 2026-07-14T13:00:00.000Z | 2026-08-05T17:00:00.000Z | 7920 | 960 | 0 |  |  |  |  |  |  |  |  |
| ms-7-start | proj-rag | 7.0 | 0 | Application and Integration Engineering: phase entry | auto |  | 2026-07-14T13:00:00.000Z | 2026-07-14T13:00:00.000Z | 0 | 0 | 0 | 100 | ASAP | cal-standard | 500 | 0 | prorated | complete | True | 2026-07-14T13:00:00.000Z | 2026-07-14T13:00:00.000Z | 0 | 0 | 0 | ws-7 | True | 0 | 0 | 2026-07-14T13:00:00.000Z | 2026-07-14T13:00:00.000Z | 0 |  |
| task-7-1 | proj-rag | 7.1 | 1 | Design conversational UX | auto |  | 2026-07-14T13:00:00.000Z | 2026-07-14T21:00:00.000Z | 480 | 480 | 0 | 100 | ASAP | cal-standard | 500 | 0 | prorated | complete | True | 2026-07-14T13:00:00.000Z | 2026-07-14T21:00:00.000Z | 480 | 480 | 0 | ws-7 |  | 0 | 0 | 2026-07-14T13:00:00.000Z | 2026-07-14T21:00:00.000Z | 480 |  |
| task-7-2 | proj-rag | 7.2 | 2 | Build chat interface | auto |  | 2026-07-15T13:00:00.000Z | 2026-07-16T17:00:00.000Z | 720 | 720 | 0 | 100 | ASAP | cal-standard | 500 | 0 | prorated | complete | True | 2026-07-15T13:00:00.000Z | 2026-07-16T17:00:00.000Z | 720 | 720 | 0 | ws-7 |  | 0 | 0 | 2026-07-15T13:00:00.000Z | 2026-07-16T17:00:00.000Z | 720 |  |
| task-7-3 | proj-rag | 7.3 | 3 | Build API gateway integration | auto |  | 2026-07-16T17:00:00.000Z | 2026-07-20T17:00:00.000Z | 960 | 960 | 0 | 100 | ASAP | cal-standard | 500 | 0 | prorated | complete | True | 2026-07-16T17:00:00.000Z | 2026-07-20T17:00:00.000Z | 960 | 960 | 0 | ws-7 |  | 0 | 0 | 2026-07-16T17:00:00.000Z | 2026-07-20T17:00:00.000Z | 960 |  |
| task-7-4 | proj-rag | 7.4 | 4 | Integrate with knowledge base search | auto |  | 2026-07-20T17:00:00.000Z | 2026-07-21T17:00:00.000Z | 480 | 480 | 0 | 100 | ASAP | cal-standard | 500 | 0 | prorated | complete | True | 2026-07-20T17:00:00.000Z | 2026-07-21T17:00:00.000Z | 480 | 480 | 0 | ws-7 |  | 0 | 0 | 2026-07-20T17:00:00.000Z | 2026-07-21T17:00:00.000Z | 480 |  |
| task-7-5 | proj-rag | 7.5 | 5 | Integrate with ticketing workflow | auto |  | 2026-07-21T17:00:00.000Z | 2026-07-22T21:00:00.000Z | 720 | 720 | 0 | 100 | ASAP | cal-standard | 500 | 0 | prorated | complete | True | 2026-07-21T17:00:00.000Z | 2026-07-22T21:00:00.000Z | 720 | 720 | 0 | ws-7 |  | 0 | 0 | 2026-07-21T17:00:00.000Z | 2026-07-22T21:00:00.000Z | 720 |  |
| task-7-6 | proj-rag | 7.6 | 6 | Implement observability instrumentation | auto |  | 2026-07-23T13:00:00.000Z | 2026-07-24T21:00:00.000Z | 960 | 960 | 0 | 100 | ASAP | cal-standard | 500 | 0 | prorated | complete | True | 2026-07-23T13:00:00.000Z | 2026-07-24T21:00:00.000Z | 960 | 960 | 0 | ws-7 |  | 0 | 0 | 2026-07-23T13:00:00.000Z | 2026-07-24T21:00:00.000Z | 960 |  |
| task-7-7 | proj-rag | 7.7 | 7 | Implement error handling and fallbacks | auto |  | 2026-07-27T13:00:00.000Z | 2026-07-27T21:00:00.000Z | 480 | 480 | 0 | 100 | ASAP | cal-standard | 500 | 0 | prorated | complete | True | 2026-07-27T13:00:00.000Z | 2026-07-27T21:00:00.000Z | 480 | 480 | 0 | ws-7 |  | 0 | 0 | 2026-07-27T13:00:00.000Z | 2026-07-27T21:00:00.000Z | 480 |  |
| task-7-8 | proj-rag | 7.8 | 8 | Conduct accessibility review | auto |  | 2026-07-28T13:00:00.000Z | 2026-07-29T17:00:00.000Z | 720 | 720 | 0 | 100 | ASAP | cal-standard | 500 | 0 | prorated | complete |  | 2026-07-28T13:00:00.000Z | 2026-07-29T17:00:00.000Z | 720 | 720 | 0 | ws-7 |  | 240 | 240 | 2026-07-28T13:00:00.000Z | 2026-07-29T17:00:00.000Z | 720 |  |
| task-7-9 | proj-rag | 7.9 | 9 | Conduct performance tuning | auto |  | 2026-07-28T13:00:00.000Z | 2026-07-29T21:00:00.000Z | 960 | 960 | 0 | 100 | ASAP | cal-standard | 500 | 0 | prorated | complete | True | 2026-07-28T13:00:00.000Z | 2026-07-29T21:00:00.000Z | 960 | 960 | 0 | ws-7 |  | 0 | 0 | 2026-07-28T13:00:00.000Z | 2026-07-29T21:00:00.000Z | 960 |  |
| task-7-10 | proj-rag | 7.10 | 10 | Conduct integration testing | auto |  | 2026-07-30T13:00:00.000Z | 2026-07-30T21:00:00.000Z | 480 | 480 | 0 | 100 | ASAP | cal-standard | 500 | 0 | prorated | complete | True | 2026-07-30T13:00:00.000Z | 2026-07-30T21:00:00.000Z | 480 | 480 | 0 | ws-7 |  | 0 | 0 | 2026-07-30T13:00:00.000Z | 2026-07-30T21:00:00.000Z | 480 |  |
| task-7-11 | proj-rag | 7.11 | 11 | Fix integration defects | auto |  | 2026-07-31T13:00:00.000Z | 2026-08-03T17:00:00.000Z | 720 | 720 | 0 | 100 | ASAP | cal-standard | 500 | 0 | prorated | complete | True | 2026-07-31T13:00:00.000Z | 2026-08-03T17:00:00.000Z | 720 | 720 | 0 | ws-7 |  | 0 | 0 | 2026-07-31T13:00:00.000Z | 2026-08-03T17:00:00.000Z | 720 |  |
| task-7-12 | proj-rag | 7.12 | 12 | Sign off application readiness | auto |  | 2026-08-03T17:00:00.000Z | 2026-08-07T17:00:00.000Z | 1920 | 1920 | 1670 | 13 | ASAP | cal-standard | 500 | 0 | prorated | blocked | True | 2026-08-03T17:00:00.000Z | 2026-08-05T17:00:00.000Z | 960 | 960 | 0 | ws-7 |  | 0 | 0 | 2026-08-03T17:00:00.000Z |  | 250 | at-risk |
| ms-7-end | proj-rag | 7.13 | 13 | Application and Integration Engineering: gate sign-off | auto |  | 2026-08-07T17:00:00.000Z | 2026-08-07T17:00:00.000Z | 0 | 0 | 0 | 0 | ASAP | cal-standard | 500 | 0 | prorated | not-started | True | 2026-08-05T17:00:00.000Z | 2026-08-05T17:00:00.000Z | 0 | 0 | 0 | ws-7 | True | 0 | 0 |  |  |  |  |
| ws-8 | proj-rag | 8 | 8 | Evaluation and Assurance | auto | True | 2026-08-07T17:00:00.000Z | 2026-09-02T17:00:00.000Z | 8640 | 960 | 960 | 0 | ASAP | cal-standard | 500 | 0 | prorated | not-started | True | 2026-08-05T17:00:00.000Z | 2026-08-31T17:00:00.000Z | 8640 | 960 | 0 |  |  |  |  |  |  |  |  |
| ms-8-start | proj-rag | 8.0 | 0 | Evaluation and Assurance: phase entry | auto |  | 2026-08-07T17:00:00.000Z | 2026-08-07T17:00:00.000Z | 0 | 0 | 0 | 0 | ASAP | cal-standard | 500 | 0 | prorated | not-started | True | 2026-08-05T17:00:00.000Z | 2026-08-05T17:00:00.000Z | 0 | 0 | 0 | ws-8 | True | 0 | 0 |  |  |  |  |
| task-8-1 | proj-rag | 8.1 | 1 | Draft evaluation contract | auto |  | 2026-08-07T17:00:00.000Z | 2026-08-10T17:00:00.000Z | 480 | 480 | 480 | 0 | ASAP | cal-standard | 500 | 0 | prorated | not-started | True | 2026-08-05T17:00:00.000Z | 2026-08-06T17:00:00.000Z | 480 | 480 | 0 | ws-8 |  | 0 | 0 |  |  |  |  |
| task-8-2 | proj-rag | 8.2 | 2 | Build golden test set | auto |  | 2026-08-10T17:00:00.000Z | 2026-08-11T21:00:00.000Z | 720 | 720 | 720 | 0 | ASAP | cal-standard | 500 | 0 | prorated | not-started | True | 2026-08-06T17:00:00.000Z | 2026-08-07T21:00:00.000Z | 720 | 720 | 0 | ws-8 |  | 0 | 0 |  |  |  |  |
| task-8-3 | proj-rag | 8.3 | 3 | Build boundary test cases | auto |  | 2026-08-12T13:00:00.000Z | 2026-08-13T21:00:00.000Z | 960 | 960 | 960 | 0 | ASAP | cal-standard | 500 | 0 | prorated | not-started | True | 2026-08-10T13:00:00.000Z | 2026-08-11T21:00:00.000Z | 960 | 960 | 0 | ws-8 |  | 0 | 0 |  |  |  |  |
| task-8-4 | proj-rag | 8.4 | 4 | Build adversarial test cases | auto |  | 2026-08-14T13:00:00.000Z | 2026-08-14T21:00:00.000Z | 480 | 480 | 480 | 0 | ASAP | cal-standard | 500 | 0 | prorated | not-started | True | 2026-08-12T13:00:00.000Z | 2026-08-12T21:00:00.000Z | 480 | 480 | 0 | ws-8 |  | 0 | 0 |  |  |  |  |
| task-8-5 | proj-rag | 8.5 | 5 | Run model quality evaluation | auto |  | 2026-08-17T13:00:00.000Z | 2026-08-18T17:00:00.000Z | 720 | 720 | 720 | 0 | ASAP | cal-standard | 500 | 0 | prorated | not-started | True | 2026-08-13T13:00:00.000Z | 2026-08-14T17:00:00.000Z | 720 | 720 | 0 | ws-8 |  | 0 | 0 |  |  |  |  |
| task-8-6 | proj-rag | 8.6 | 6 | Run retrieval evaluation | auto |  | 2026-08-18T17:00:00.000Z | 2026-08-20T17:00:00.000Z | 960 | 960 | 960 | 0 | ASAP | cal-standard | 500 | 0 | prorated | not-started | True | 2026-08-14T17:00:00.000Z | 2026-08-18T17:00:00.000Z | 960 | 960 | 0 | ws-8 |  | 0 | 0 |  |  |  |  |
| task-8-7 | proj-rag | 8.7 | 7 | Run agent trajectory evaluation | auto |  | 2026-08-20T17:00:00.000Z | 2026-08-21T17:00:00.000Z | 480 | 480 | 480 | 0 | ASAP | cal-standard | 500 | 0 | prorated | not-started | True | 2026-08-18T17:00:00.000Z | 2026-08-19T17:00:00.000Z | 480 | 480 | 0 | ws-8 |  | 0 | 0 |  |  |  |  |
| task-8-8 | proj-rag | 8.8 | 8 | Run security penetration test | auto |  | 2026-08-21T17:00:00.000Z | 2026-08-24T21:00:00.000Z | 720 | 720 | 720 | 0 | ASAP | cal-standard | 500 | 0 | prorated | not-started | True | 2026-08-19T17:00:00.000Z | 2026-08-20T21:00:00.000Z | 720 | 720 | 0 | ws-8 |  | 0 | 0 |  |  |  |  |
| task-8-9 | proj-rag | 8.9 | 9 | Run bias and fairness review | auto |  | 2026-08-25T13:00:00.000Z | 2026-08-26T21:00:00.000Z | 960 | 960 | 960 | 0 | ASAP | cal-standard | 500 | 0 | prorated | not-started | True | 2026-08-21T13:00:00.000Z | 2026-08-24T21:00:00.000Z | 960 | 960 | 0 | ws-8 |  | 0 | 0 |  |  |  |  |
| task-8-10 | proj-rag | 8.10 | 10 | Conduct human acceptance review | auto |  | 2026-08-27T13:00:00.000Z | 2026-08-27T21:00:00.000Z | 480 | 480 | 480 | 0 | ASAP | cal-standard | 500 | 0 | prorated | not-started | True | 2026-08-25T13:00:00.000Z | 2026-08-25T21:00:00.000Z | 480 | 480 | 0 | ws-8 |  | 0 | 0 |  |  |  |  |
| task-8-11 | proj-rag | 8.11 | 11 | Remediate evaluation findings | auto |  | 2026-08-28T13:00:00.000Z | 2026-08-31T17:00:00.000Z | 720 | 720 | 720 | 0 | ASAP | cal-standard | 500 | 0 | prorated | not-started | True | 2026-08-26T13:00:00.000Z | 2026-08-27T17:00:00.000Z | 720 | 720 | 0 | ws-8 |  | 0 | 0 |  |  |  |  |
| task-8-12 | proj-rag | 8.12 | 12 | Sign off release gate | auto |  | 2026-08-31T17:00:00.000Z | 2026-09-02T17:00:00.000Z | 960 | 960 | 960 | 0 | ASAP | cal-standard | 500 | 0 | prorated | not-started | True | 2026-08-27T17:00:00.000Z | 2026-08-31T17:00:00.000Z | 960 | 960 | 0 | ws-8 |  | 0 | 0 |  |  |  |  |
| ms-8-end | proj-rag | 8.13 | 13 | Evaluation and Assurance: gate sign-off | auto |  | 2026-09-02T17:00:00.000Z | 2026-09-02T17:00:00.000Z | 0 | 0 | 0 | 0 | ASAP | cal-standard | 500 | 0 | prorated | not-started | True | 2026-08-31T17:00:00.000Z | 2026-08-31T17:00:00.000Z | 0 | 0 | 0 | ws-8 | True | 0 | 0 |  |  |  |  |
| ws-9 | proj-rag | 9 | 9 | Pilot and Rollout | auto | True | 2026-09-02T17:00:00.000Z | 2026-09-28T17:00:00.000Z | 8640 | 960 | 960 | 0 | ASAP | cal-standard | 500 | 0 | prorated | not-started | True | 2026-08-31T17:00:00.000Z | 2026-09-24T17:00:00.000Z | 8640 | 960 | 0 |  |  |  |  |  |  |  |  |
| ms-9-start | proj-rag | 9.0 | 0 | Pilot and Rollout: phase entry | auto |  | 2026-09-02T17:00:00.000Z | 2026-09-02T17:00:00.000Z | 0 | 0 | 0 | 0 | ASAP | cal-standard | 500 | 0 | prorated | not-started | True | 2026-08-31T17:00:00.000Z | 2026-08-31T17:00:00.000Z | 0 | 0 | 0 | ws-9 | True | 0 | 0 |  |  |  |  |
| task-9-1 | proj-rag | 9.1 | 1 | Select pilot cohort | auto |  | 2026-09-02T17:00:00.000Z | 2026-09-03T17:00:00.000Z | 480 | 480 | 480 | 0 | ASAP | cal-standard | 500 | 0 | prorated | not-started | True | 2026-08-31T17:00:00.000Z | 2026-09-01T17:00:00.000Z | 480 | 480 | 0 | ws-9 |  | 0 | 0 |  |  |  |  |
| task-9-2 | proj-rag | 9.2 | 2 | Run shadow mode evaluation | auto |  | 2026-09-03T17:00:00.000Z | 2026-09-04T21:00:00.000Z | 720 | 720 | 720 | 0 | ASAP | cal-standard | 500 | 0 | prorated | not-started | True | 2026-09-01T17:00:00.000Z | 2026-09-02T21:00:00.000Z | 720 | 720 | 0 | ws-9 |  | 0 | 0 |  |  |  |  |
| task-9-3 | proj-rag | 9.3 | 3 | Prepare training materials | auto |  | 2026-09-07T13:00:00.000Z | 2026-09-08T21:00:00.000Z | 960 | 960 | 960 | 0 | ASAP | cal-standard | 500 | 0 | prorated | not-started | True | 2026-09-03T13:00:00.000Z | 2026-09-04T21:00:00.000Z | 960 | 960 | 0 | ws-9 |  | 0 | 0 |  |  |  |  |
| task-9-4 | proj-rag | 9.4 | 4 | Train pilot support staff | auto |  | 2026-09-09T13:00:00.000Z | 2026-09-09T21:00:00.000Z | 480 | 480 | 480 | 0 | ASAP | cal-standard | 500 | 0 | prorated | not-started | True | 2026-09-07T13:00:00.000Z | 2026-09-07T21:00:00.000Z | 480 | 480 | 0 | ws-9 |  | 0 | 0 |  |  |  |  |
| task-9-5 | proj-rag | 9.5 | 5 | Launch pilot cohort | auto |  | 2026-09-10T13:00:00.000Z | 2026-09-11T17:00:00.000Z | 720 | 720 | 720 | 0 | ASAP | cal-standard | 500 | 0 | prorated | not-started | True | 2026-09-08T13:00:00.000Z | 2026-09-09T17:00:00.000Z | 720 | 720 | 0 | ws-9 |  | 0 | 0 |  |  |  |  |
| task-9-6 | proj-rag | 9.6 | 6 | Collect pilot feedback | auto |  | 2026-09-11T17:00:00.000Z | 2026-09-15T17:00:00.000Z | 960 | 960 | 960 | 0 | ASAP | cal-standard | 500 | 0 | prorated | not-started | True | 2026-09-09T17:00:00.000Z | 2026-09-11T17:00:00.000Z | 960 | 960 | 0 | ws-9 |  | 0 | 0 |  |  |  |  |
| task-9-7 | proj-rag | 9.7 | 7 | Remediate pilot findings | auto |  | 2026-09-15T17:00:00.000Z | 2026-09-16T17:00:00.000Z | 480 | 480 | 480 | 0 | ASAP | cal-standard | 500 | 0 | prorated | not-started | True | 2026-09-11T17:00:00.000Z | 2026-09-14T17:00:00.000Z | 480 | 480 | 0 | ws-9 |  | 0 | 0 |  |  |  |  |
| task-9-8 | proj-rag | 9.8 | 8 | Prepare canary rollout plan | auto |  | 2026-09-16T17:00:00.000Z | 2026-09-17T21:00:00.000Z | 720 | 720 | 720 | 0 | ASAP | cal-standard | 500 | 0 | prorated | not-started | True | 2026-09-14T17:00:00.000Z | 2026-09-15T21:00:00.000Z | 720 | 720 | 0 | ws-9 |  | 0 | 0 |  |  |  |  |
| task-9-9 | proj-rag | 9.9 | 9 | Launch canary deployment | auto |  | 2026-09-18T13:00:00.000Z | 2026-09-21T21:00:00.000Z | 960 | 960 | 960 | 0 | ASAP | cal-standard | 500 | 0 | prorated | not-started | True | 2026-09-16T13:00:00.000Z | 2026-09-17T21:00:00.000Z | 960 | 960 | 0 | ws-9 |  | 0 | 0 |  |  |  |  |
| task-9-10 | proj-rag | 9.10 | 10 | Monitor canary metrics | auto |  | 2026-09-22T13:00:00.000Z | 2026-09-22T21:00:00.000Z | 480 | 480 | 480 | 0 | ASAP | cal-standard | 500 | 0 | prorated | not-started | True | 2026-09-18T13:00:00.000Z | 2026-09-18T21:00:00.000Z | 480 | 480 | 0 | ws-9 |  | 0 | 0 |  |  |  |  |
| task-9-11 | proj-rag | 9.11 | 11 | Conduct go/no-go review | auto |  | 2026-09-23T13:00:00.000Z | 2026-09-24T17:00:00.000Z | 720 | 720 | 720 | 0 | ASAP | cal-standard | 500 | 0 | prorated | not-started | True | 2026-09-21T13:00:00.000Z | 2026-09-22T17:00:00.000Z | 720 | 720 | 0 | ws-9 |  | 0 | 0 |  |  |  |  |
| task-9-12 | proj-rag | 9.12 | 12 | Launch production rollout | auto |  | 2026-09-24T17:00:00.000Z | 2026-09-28T17:00:00.000Z | 960 | 960 | 960 | 0 | ASAP | cal-standard | 500 | 0 | prorated | not-started | True | 2026-09-22T17:00:00.000Z | 2026-09-24T17:00:00.000Z | 960 | 960 | 0 | ws-9 |  | 0 | 0 |  |  |  |  |
| ms-9-end | proj-rag | 9.13 | 13 | Pilot and Rollout: gate sign-off | auto |  | 2026-09-28T17:00:00.000Z | 2026-09-28T17:00:00.000Z | 0 | 0 | 0 | 0 | ASAP | cal-standard | 500 | 0 | prorated | not-started | True | 2026-09-24T17:00:00.000Z | 2026-09-24T17:00:00.000Z | 0 | 0 | 0 | ws-9 | True | 0 | 0 |  |  |  |  |
| ws-10 | proj-rag | 10 | 10 | Production Operations | auto | True | 2026-09-28T17:00:00.000Z | 2026-10-22T17:00:00.000Z | 8640 | 960 | 960 | 0 | ASAP | cal-standard | 500 | 0 | prorated | not-started | True | 2026-09-24T17:00:00.000Z | 2026-10-20T17:00:00.000Z | 8640 | 960 | 0 |  |  |  |  |  |  |  |  |
| ms-10-start | proj-rag | 10.0 | 0 | Production Operations: phase entry | auto |  | 2026-09-28T17:00:00.000Z | 2026-09-28T17:00:00.000Z | 0 | 0 | 0 | 0 | ASAP | cal-standard | 500 | 0 | prorated | not-started | True | 2026-09-24T17:00:00.000Z | 2026-09-24T17:00:00.000Z | 0 | 0 | 0 | ws-10 | True | 0 | 0 |  |  |  |  |
| task-10-1 | proj-rag | 10.1 | 1 | Define SLOs | auto |  | 2026-09-28T17:00:00.000Z | 2026-09-29T17:00:00.000Z | 480 | 480 | 480 | 0 | ASAP | cal-standard | 500 | 0 | prorated | not-started | True | 2026-09-24T17:00:00.000Z | 2026-09-25T17:00:00.000Z | 480 | 480 | 0 | ws-10 |  | 0 | 0 |  |  |  |  |
| task-10-2 | proj-rag | 10.2 | 2 | Set up production monitoring | auto |  | 2026-09-29T17:00:00.000Z | 2026-09-30T21:00:00.000Z | 720 | 720 | 720 | 0 | ASAP | cal-standard | 500 | 0 | prorated | not-started | True | 2026-09-25T17:00:00.000Z | 2026-09-28T21:00:00.000Z | 720 | 720 | 0 | ws-10 |  | 0 | 0 |  |  |  |  |
| task-10-3 | proj-rag | 10.3 | 3 | Set up quality drift detection | auto |  | 2026-10-01T13:00:00.000Z | 2026-10-02T21:00:00.000Z | 960 | 960 | 960 | 0 | ASAP | cal-standard | 500 | 0 | prorated | not-started | True | 2026-09-29T13:00:00.000Z | 2026-09-30T21:00:00.000Z | 960 | 960 | 0 | ws-10 |  | 0 | 0 |  |  |  |  |

| id | projectId | wbsCode | sequence | name | schedulingMode | start | finish | durationMinutes | workMinutes | remainingWorkMinutes | percentComplete | constraintType | calendarId | priority | fixedCost | costAccrual | status | isCritical | baselineStart | baselineFinish | baselineDurationMinutes | baselineWorkMinutes | baselineCost | parentId | isMilestone | totalFloatMinutes | freeFloatMinutes |
| --- | --- | --- | --- | --- | --- | --- | --- | --- | --- | --- | --- | --- | --- | --- | --- | --- | --- | --- | --- | --- | --- | --- | --- | --- | --- | --- | --- |
| task-10-4 | proj-rag | 10.4 | 4 | Set up data drift detection | auto | 2026-10-05T13:00:00.000Z | 2026-10-05T21:00:00.000Z | 480 | 480 | 480 | 0 | ASAP | cal-standard | 500 | 0 | prorated | not-started | True | 2026-10-01T13:00:00.000Z | 2026-10-01T21:00:00.000Z | 480 | 480 | 0 | ws-10 |  | 0 | 0 |
| task-10-5 | proj-rag | 10.5 | 5 | Set up model drift detection | auto | 2026-10-06T13:00:00.000Z | 2026-10-07T17:00:00.000Z | 720 | 720 | 720 | 0 | ASAP | cal-standard | 500 | 0 | prorated | not-started | True | 2026-10-02T13:00:00.000Z | 2026-10-05T17:00:00.000Z | 720 | 720 | 0 | ws-10 |  | 0 | 0 |
| task-10-6 | proj-rag | 10.6 | 6 | Set up token and cost monitoring | auto | 2026-10-07T17:00:00.000Z | 2026-10-09T17:00:00.000Z | 960 | 960 | 960 | 0 | ASAP | cal-standard | 500 | 0 | prorated | not-started | True | 2026-10-05T17:00:00.000Z | 2026-10-07T17:00:00.000Z | 960 | 960 | 0 | ws-10 |  | 0 | 0 |
| task-10-7 | proj-rag | 10.7 | 7 | Establish incident response runbook | auto | 2026-10-09T17:00:00.000Z | 2026-10-12T17:00:00.000Z | 480 | 480 | 480 | 0 | ASAP | cal-standard | 500 | 0 | prorated | not-started | True | 2026-10-07T17:00:00.000Z | 2026-10-08T17:00:00.000Z | 480 | 480 | 0 | ws-10 |  | 0 | 0 |
| task-10-8 | proj-rag | 10.8 | 8 | Establish change control process | auto | 2026-10-12T17:00:00.000Z | 2026-10-13T21:00:00.000Z | 720 | 720 | 720 | 0 | ASAP | cal-standard | 500 | 0 | prorated | not-started | True | 2026-10-08T17:00:00.000Z | 2026-10-09T21:00:00.000Z | 720 | 720 | 0 | ws-10 |  | 0 | 0 |
| task-10-9 | proj-rag | 10.9 | 9 | Run first continual evaluation cycle | auto | 2026-10-14T13:00:00.000Z | 2026-10-15T21:00:00.000Z | 960 | 960 | 960 | 0 | ASAP | cal-standard | 500 | 0 | prorated | not-started | True | 2026-10-12T13:00:00.000Z | 2026-10-13T21:00:00.000Z | 960 | 960 | 0 | ws-10 |  | 0 | 0 |
| task-10-10 | proj-rag | 10.10 | 10 | Conduct benefit realization review | auto | 2026-10-16T13:00:00.000Z | 2026-10-16T21:00:00.000Z | 480 | 480 | 480 | 0 | ASAP | cal-standard | 500 | 0 | prorated | not-started | True | 2026-10-14T13:00:00.000Z | 2026-10-14T21:00:00.000Z | 480 | 480 | 0 | ws-10 |  | 0 | 0 |
| task-10-11 | proj-rag | 10.11 | 11 | Conduct post-implementation review | auto | 2026-10-19T13:00:00.000Z | 2026-10-20T17:00:00.000Z | 720 | 720 | 720 | 0 | ASAP | cal-standard | 500 | 0 | prorated | not-started | True | 2026-10-15T13:00:00.000Z | 2026-10-16T17:00:00.000Z | 720 | 720 | 0 | ws-10 |  | 0 | 0 |
| task-10-12 | proj-rag | 10.12 | 12 | Publish operations handover report | auto | 2026-10-20T17:00:00.000Z | 2026-10-22T17:00:00.000Z | 960 | 960 | 960 | 0 | ASAP | cal-standard | 500 | 0 | prorated | not-started | True | 2026-10-16T17:00:00.000Z | 2026-10-20T17:00:00.000Z | 960 | 960 | 0 | ws-10 |  | 0 | 0 |
| ms-10-end | proj-rag | 10.13 | 13 | Production Operations: gate sign-off | auto | 2026-10-22T17:00:00.000Z | 2026-10-22T17:00:00.000Z | 0 | 0 | 0 | 0 | ASAP | cal-standard | 500 | 0 | prorated | not-started | True | 2026-10-20T17:00:00.000Z | 2026-10-20T17:00:00.000Z | 0 | 0 | 0 | ws-10 | True | 0 | 0 |

Links (id, predecessorTaskId, successorTaskId, type, lagMinutes):
- dep-1 ms-1-start task-1-1 FS 0
- dep-2 task-1-1 task-1-2 FS 0
- dep-3 task-1-2 task-1-3 FS 0
- dep-4 task-1-3 task-1-4 FS 0
- dep-5 task-1-4 task-1-5 FS 0
- dep-6 task-1-5 task-1-6 FS 0
- dep-7 task-1-6 task-1-7 FS 0
- dep-8 task-1-7 task-1-8 FS 0
- dep-9 task-1-8 task-1-9 FS 0
- dep-10 task-1-9 task-1-10 FS 0
- dep-11 task-1-10 task-1-11 FS 0
- dep-12 task-1-11 task-1-12 FS 0
- dep-13 task-1-12 ms-1-end FS 0
- dep-14 ms-2-start task-2-1 FS 0
- dep-15 task-2-1 task-2-2 FS 0
- dep-16 task-2-2 task-2-3 FS 0
- dep-17 task-2-3 task-2-4 FS 0
- dep-18 task-2-4 task-2-5 FS 0
- dep-19 task-2-5 task-2-6 FS 0
- dep-20 task-2-6 task-2-7 FS 0
- dep-21 task-2-7 task-2-8 FS 0
- dep-22 task-2-8 task-2-9 FS 0
- dep-23 task-2-9 task-2-10 FS 0
- dep-24 task-2-10 task-2-11 FS 0
- dep-25 task-2-11 task-2-12 FS 0
- dep-26 task-2-12 ms-2-end FS 0
- dep-27 ms-3-start task-3-1 FS 0
- dep-28 task-3-1 task-3-2 FS 0
- dep-29 task-3-2 task-3-3 FS 0
- dep-30 task-3-3 task-3-4 FS 0
- dep-31 task-3-4 task-3-5 FS 0
- dep-32 task-3-5 task-3-6 FS 0
- dep-33 task-3-6 task-3-7 FS 0
- dep-34 task-3-7 task-3-8 FS 0
- dep-35 task-3-8 task-3-9 FS 0
- dep-36 task-3-9 task-3-10 FS 0
- dep-37 task-3-10 task-3-11 FS 0
- dep-38 task-3-11 task-3-12 FS 0
- dep-39 task-3-12 ms-3-end FS 0
- dep-40 ms-4-start task-4-1 FS 0
- dep-41 task-4-1 task-4-2 FS 0
- dep-42 task-4-2 task-4-3 FS 0
- dep-43 task-4-3 task-4-4 FS 0
- dep-44 task-4-4 task-4-5 FS 0
- dep-45 task-4-5 task-4-6 FS 0
- dep-46 task-4-6 task-4-7 FS 0
- dep-47 task-4-7 task-4-8 FS 0
- dep-48 task-4-8 task-4-9 FS 0
- dep-49 task-4-9 task-4-10 FS 0
- dep-50 task-4-10 task-4-11 FS 0
- dep-51 task-4-11 task-4-12 FS 0
- dep-52 task-4-12 ms-4-end FS 0
- dep-53 ms-5-start task-5-1 FS 0
- dep-54 task-5-1 task-5-2 FS 0
- dep-55 task-5-2 task-5-3 FS 0
- dep-56 task-5-3 task-5-4 FS 0
- dep-57 task-5-4 task-5-5 FS 0
- dep-58 task-5-5 task-5-6 FS 0
- dep-59 task-5-6 task-5-7 FS 0
- dep-60 task-5-7 task-5-8 FS 0
- dep-61 task-5-8 task-5-9 FS 0
- dep-62 task-5-9 task-5-10 FS 0
- dep-63 task-5-10 task-5-11 FS 0
- dep-64 task-5-11 task-5-12 FS 0
- dep-65 task-5-12 ms-5-end FS 0
- dep-66 ms-6-start task-6-1 FS 0
- dep-67 task-6-1 task-6-2 FS 0
- dep-68 task-6-2 task-6-3 FS 0
- dep-69 task-6-3 task-6-4 FS 0
- dep-70 task-6-4 task-6-5 FS 0
- dep-71 task-6-5 task-6-6 FS 0
- dep-72 task-6-6 task-6-7 FS 0
- dep-73 task-6-7 task-6-8 FS 0
- dep-74 task-6-8 task-6-9 FS 0
- dep-75 task-6-9 task-6-10 FS 0
- dep-76 task-6-10 task-6-11 FS 0
- dep-77 task-6-11 task-6-12 FS 0
- dep-78 task-6-12 ms-6-end FS 0
- dep-79 ms-7-start task-7-1 FS 0
- dep-80 task-7-1 task-7-2 FS 0
- dep-81 task-7-2 task-7-3 FS 0
- dep-82 task-7-3 task-7-4 FS 0
- dep-83 task-7-4 task-7-5 FS 0
- dep-84 task-7-5 task-7-6 FS 0
- dep-85 task-7-6 task-7-7 FS 0
- dep-86 task-7-7 task-7-8 FS 0
- dep-88 task-7-9 task-7-10 FS 0
- dep-89 task-7-10 task-7-11 FS 0
- dep-90 task-7-11 task-7-12 FS 0
- dep-91 task-7-12 ms-7-end FS 0
- dep-92 ms-8-start task-8-1 FS 0
- dep-93 task-8-1 task-8-2 FS 0
- dep-94 task-8-2 task-8-3 FS 0
- dep-95 task-8-3 task-8-4 FS 0
- dep-96 task-8-4 task-8-5 FS 0
- dep-97 task-8-5 task-8-6 FS 0
- dep-98 task-8-6 task-8-7 FS 0
- dep-99 task-8-7 task-8-8 FS 0
- dep-100 task-8-8 task-8-9 FS 0
- dep-101 task-8-9 task-8-10 FS 0
- dep-102 task-8-10 task-8-11 FS 0
- dep-103 task-8-11 task-8-12 FS 0
- dep-104 task-8-12 ms-8-end FS 0
- dep-105 ms-9-start task-9-1 FS 0
- dep-106 task-9-1 task-9-2 FS 0
- dep-107 task-9-2 task-9-3 FS 0
- dep-108 task-9-3 task-9-4 FS 0
- dep-109 task-9-4 task-9-5 FS 0
- dep-110 task-9-5 task-9-6 FS 0
- dep-111 task-9-6 task-9-7 FS 0
- dep-112 task-9-7 task-9-8 FS 0
- dep-113 task-9-8 task-9-9 FS 0
- dep-114 task-9-9 task-9-10 FS 0
- dep-115 task-9-10 task-9-11 FS 0
- dep-116 task-9-11 task-9-12 FS 0
- dep-117 task-9-12 ms-9-end FS 0
- dep-118 ms-10-start task-10-1 FS 0
- dep-119 task-10-1 task-10-2 FS 0
- dep-120 task-10-2 task-10-3 FS 0
- dep-121 task-10-3 task-10-4 FS 0
- dep-122 task-10-4 task-10-5 FS 0
- dep-123 task-10-5 task-10-6 FS 0
- dep-124 task-10-6 task-10-7 FS 0
- dep-125 task-10-7 task-10-8 FS 0
- dep-126 task-10-8 task-10-9 FS 0
- dep-127 task-10-9 task-10-10 FS 0
- dep-128 task-10-10 task-10-11 FS 0
- dep-129 task-10-11 task-10-12 FS 0
- dep-130 task-10-12 ms-10-end FS 0
- dep-131 task-7-7 task-7-9 FS 0
- dep-132 task-7-8 task-7-10 FS 0
- dep-133 ms-1-end ms-2-start FS 0
- dep-134 ms-2-end ms-3-start FS 0
- dep-135 ms-3-end ms-4-start FS 0
- dep-136 ms-4-end ms-5-start FS 0
- dep-137 ms-5-end ms-6-start FS 0
- dep-138 ms-6-end ms-7-start FS 0
- dep-139 ms-7-end ms-8-start FS 0
- dep-140 ms-8-end ms-9-start FS 0
- dep-141 ms-9-end ms-10-start FS 0
- dep-142 task-6-5 task-6-6 SS 480
- dep-143 task-6-12 task-8-1 FF 0
- dep-144 task-8-1 task-8-9 SF 0
- dep-145 task-3-7 task-3-8 FS -240
- dep-146 task-5-10 task-5-11 FS 2880
